# Nova AI

Schedule from MS Project, 2025-12-15 to 2026-06-26, costs in £.

## Calendars

- Standard: Mon-Fri 08:00-12:00, 13:00-17:00; Sat-Sun off.

## Resources

| Resource | Rate | Cost per use |
| --- | --- | --- |
| Ahmed Saleh - Project Manager | 50 |  |
| Bilal Anabosi - Business Analyst | 35 |  |
| Noor Ali - UX/UI Designer |  | 300 |
| Hossam Shehadhe - Backend Lead Developer | 40 |  |
| Sarah Nasser - Frontend Developer | 25 |  |
| Amro Eid - AI / ML Engineer | 50 |  |
| Rami Abed - DevOps Engineer | 55 |  |
| Dana Farah - QA Engineer | 25 |  |
| Dev Team -Shared Developers | 90 |  |
| Stakeholders - Business Users |  |  |
| AWS Cloud |  |  |
| OpenAI API |  |  |
| Jira |  |  |
| GitHub |  |  |
| Figma |  |  |
| Monitoring Tools |  |  |
| Youssef Mansour - JuniorBackend Developer | 30 |  |

## Schedule

| ID | WBS | Task | Type | Duration | Start | Finish | Predecessors | Baseline start | Baseline finish | Baseline duration | Total slack | Free slack | Resources | Work | Cost | Baseline cost |
| --- | --- | --- | --- | --- | --- | --- | --- | --- | --- | --- | --- | --- | --- | --- | --- | --- |
| 1 | 1 | **Initiation & Planning** |  | 7d | 2025-12-15 | 2025-12-23 |  | 2025-12-15 | 2025-12-23 | 7d | 0d |  |  | 72h | 3,380 | 3,360 |
| 2 | 1.1 | Project Charter |  | 2d | 2025-12-15 | 2025-12-16 |  | 2025-12-15 | 2025-12-16 | 2d | 0d |  | Ahmed Saleh - Project Manager; Monitoring Tools [0.1%] | 16h | 820 | 800 |
| 3 | 1.2 | Stakeholder Analysis |  | 1d | 2025-12-17 | 2025-12-17 | 2 | 2025-12-17 | 2025-12-17 | 1d | 0d |  | Ahmed Saleh - Project Manager | 8h | 400 | 400 |
| 4 | 1.3 | High‑Level Scope Definition |  | 2d | 2025-12-18 | 2025-12-19 | 3 | 2025-12-18 | 2025-12-19 | 2d | 0d |  | Ahmed Saleh - Project Manager; Bilal Anabosi - Business Analyst | 32h | 1,360 | 1,360 |
| 5 | 1.4 | MS Project Schedule & Budget Setup |  | 2d | 2025-12-22 | 2025-12-23 | 4 | 2025-12-22 | 2025-12-23 | 2d | 0d |  | Ahmed Saleh - Project Manager | 16h | 800 | 800 |
| 6 | 2 | Milestone M1: Project Approved | milestone | 0d | 2025-12-23 | 2025-12-23 | 1 | 2025-12-23 | 2025-12-23 | 0d | 0d |  |  |  |  |  |
| 7 | 3 | **Requirements & Analysis** |  | 12d | 2025-12-24 | 2026-01-08 | 1, 6 | 2025-12-24 | 2026-01-08 | 12d | 0d |  |  | 160h | 6,120 | 5,640 |
| 8 | 3.1 | Functional Requirements (Sales, AI, CRM) |  | 4d | 2025-12-24 | 2025-12-29 |  | 2025-12-24 | 2025-12-29 | 4d | 0d |  | Bilal Anabosi - Business Analyst | 32h | 1,120 | 1,120 |
| 9 | 3.2 | Non‑Functional Requirements (Security, Performance) |  | 3d | 2025-12-24 | 2025-12-26 | 8SS | 2025-12-24 | 2025-12-26 | 3d | 4d |  | Rami Abed - DevOps Engineer | 24h | 1,320 | 840 |
| 10 | 3.3 | Data & AI Requirements |  | 3d | 2025-12-30 | 2026-01-01 | 8 | 2025-12-30 | 2026-01-01 | 3d | 0d |  | Amro Eid - AI / ML Engineer; Bilal Anabosi - Business Analyst | 48h | 2,040 | 2,040 |
| 11 | 3.4 | Requirements Documentation |  | 3d | 2026-01-02 | 2026-01-06 | 10, 9 | 2026-01-02 | 2026-01-06 | 3d | 0d |  | Bilal Anabosi - Business Analyst | 24h | 840 | 840 |
| 12 | 3.5 | Approval & Baseline |  | 2d | 2026-01-07 | 2026-01-08 | 11 | 2026-01-07 | 2026-01-08 | 2d | 0d |  | Ahmed Saleh - Project Manager; Stakeholders - Business Users | 32h | 800 | 800 |
| 13 | 4 | Milestone M2: Requirements Signed Off | milestone | 0d | 2026-01-08 | 2026-01-08 | 7 | 2026-01-08 | 2026-01-08 | 0d | 0d |  |  |  |  |  |
| 14 | 5 | **UX/UI & System Design** |  | 12d | 2026-01-09 | 2026-01-26 | 7, 13 | 2026-01-09 | 2026-01-26 | 12d | 0d |  | Figma [0.1%]; Jira [0.1%] | 192h | 5,260 | 5,220 |
| 15 | 5.1 | UX Research & User Journeys |  | 3d | 2026-01-09 | 2026-01-13 |  | 2026-01-09 | 2026-01-13 | 3d | 0d |  | Noor Ali - UX/UI Designer | 24h | 300 | 300 |
| 16 | 5.2 | Wireframes (Web Dashboard) |  | 4d | 2026-01-14 | 2026-01-19 | 15 | 2026-01-14 | 2026-01-19 | 4d | 0d |  | Noor Ali - UX/UI Designer | 32h | 300 | 300 |
| 17 | 5.3 | UI Design (Figma) |  | 5d | 2026-01-20 | 2026-01-26 | 16 | 2026-01-20 | 2026-01-26 | 5d | 0d |  | Noor Ali - UX/UI Designer | 40h | 300 | 300 |
| 18 | 5.4 | System Architecture Design |  | 4d | 2026-01-14 | 2026-01-19 | 16SS | 2026-01-14 | 2026-01-19 | 4d | 1d | 0d | Rami Abed - DevOps Engineer; Hossam Shehadhe - Backend Lead Developer | 64h | 3,040 | 3,040 |
| 19 | 5.5 | Database & API Design |  | 4d | 2026-01-20 | 2026-01-23 | 18 | 2026-01-20 | 2026-01-23 | 4d | 1d |  | Hossam Shehadhe - Backend Lead Developer | 32h | 1,280 | 1,280 |
| 20 | 6 | Milestone M3: Design Approved | milestone | 0d | 2026-01-26 | 2026-01-26 | 14 | 2026-01-26 | 2026-01-26 | 0d | 0d |  |  |  |  |  |
| 21 | 7 | **Core Development** |  | 61d | 2026-01-27 | 2026-04-21 | 14, 20 | 2026-01-27 | 2026-04-21 | 61d | 0d |  | AWS Cloud [0.1%]; OpenAI API [0.1%]; GitHub [0.1%]; Jira [0.1%] | 744h | 33,020 | 32,960 |
| 22 | 7.1 | **Backend Development** |  | 24d | 2026-01-27 | 2026-02-27 |  | 2026-01-27 | 2026-02-17 | 16d | 37d |  |  | 256h | 9,440 | 10,240 |
| 23 | 7.1.1 | Auth & User Management |  | 6d | 2026-01-27 | 2026-02-03 |  | 2026-01-27 | 2026-02-03 | 6d | 37d | 0d | Hossam Shehadhe - Backend Lead Developer | 48h | 1,920 | 1,920 |
| 24 | 7.1.2 | CRM Integration |  | 8d | 2026-02-04 | 2026-02-13 | 23 | 2026-02-04 | 2026-02-13 | 8d | 37d | 0d | Hossam Shehadhe - Backend Lead Developer | 64h | 2,560 | 2,560 |
| 25 | 7.1.3 | Campaign Engine |  | 10d | 2026-02-04 | 2026-02-17 | 24SS | 2026-02-04 | 2026-02-17 | 10d | 37d | 0d | Youssef Mansour - JuniorBackend Developer | 80h | 2,400 | 3,200 |
| 26 | 7.1.4 | Intent Signals Engine |  | 8d | 2026-02-18 | 2026-02-27 | 25 | 2026-02-04 | 2026-02-13 | 8d | 37d |  | Hossam Shehadhe - Backend Lead Developer | 64h | 2,560 | 2,560 |

| ID | WBS | Task | Type | Duration | Start | Finish | Predecessors | Baseline start | Baseline finish | Baseline duration | Total slack | Resources | Work | Cost | Baseline cost |
| --- | --- | --- | --- | --- | --- | --- | --- | --- | --- | --- | --- | --- | --- | --- | --- |
| 27 | 7.2 | **AI & ML Development** |  | 24d | 2026-01-27 | 2026-02-27 |  | 2026-01-27 | 2026-02-27 | 24d | 0d |  | 192h | 9,600 | 9,600 |
| 28 | 7.2.1 | LLM Prompt Engineering |  | 6d | 2026-01-27 | 2026-02-03 |  | 2026-01-27 | 2026-02-03 | 6d | 0d | Amro Eid - AI / ML Engineer | 48h | 2,400 | 2,400 |
| 29 | 7.2.2 | Autonomous Agent Logic |  | 10d | 2026-02-04 | 2026-02-17 | 28 | 2026-02-04 | 2026-02-17 | 10d | 0d | Amro Eid - AI / ML Engineer | 80h | 4,000 | 4,000 |
| 30 | 7.2.3 | Email & LinkedIn NLP |  | 8d | 2026-02-18 | 2026-02-27 | 29 | 2026-02-18 | 2026-02-27 | 8d | 0d | Amro Eid - AI / ML Engineer | 64h | 3,200 | 3,200 |
| 31 | 7.3 | **Frontend Development** |  | 26d | 2026-03-02 | 2026-04-06 |  | 2026-03-02 | 2026-04-06 | 26d | 0d |  | 208h | 5,200 | 5,200 |
| 32 | 7.3.1 | Dashboard |  | 8d | 2026-03-02 | 2026-03-11 | 30 | 2026-03-02 | 2026-03-11 | 8d | 0d | Sarah Nasser - Frontend Developer | 64h | 1,600 | 1,600 |
| 33 | 7.3.2 | Campaign Builder UI |  | 10d | 2026-03-12 | 2026-03-25 | 32 | 2026-03-12 | 2026-03-25 | 10d | 0d | Sarah Nasser - Frontend Developer | 80h | 2,000 | 2,000 |
| 34 | 7.3.3 | Analytics & Reporting |  | 8d | 2026-03-26 | 2026-04-06 | 33 | 2026-03-26 | 2026-04-06 | 8d | 0d | Sarah Nasser - Frontend Developer | 64h | 1,600 | 1,600 |
| 35 | 7.4 | **DevOps & Infrastructure** |  | 11d | 2026-04-07 | 2026-04-21 |  | 2026-04-07 | 2026-04-21 | 11d | 0d |  | 88h | 7,920 | 7,920 |
| 36 | 7.4.1 | CI/CD Pipeline |  | 5d | 2026-04-07 | 2026-04-13 | 34 | 2026-04-07 | 2026-04-13 | 5d | 0d | Dev Team -Shared Developers | 40h | 3,600 | 3,600 |
| 37 | 7.4.2 | Cloud Deployment |  | 6d | 2026-04-14 | 2026-04-21 | 36 | 2026-04-14 | 2026-04-21 | 6d | 0d | Dev Team -Shared Developers | 48h | 4,320 | 4,320 |
| 38 | 8 | Milestone M4: Feature Complete | milestone | 0d | 2026-04-21 | 2026-04-21 | 21 | 2026-04-21 | 2026-04-21 | 0d | 0d |  |  |  |  |
| 39 | 9 | **Advanced / Bonus Features** |  | 22d | 2026-04-22 | 2026-05-21 | 21, 38 | 2026-04-22 | 2026-05-21 | 22d | 0d |  | 176h | 7,400 | 7,400 |
| 40 | 9.1 | Voice AI & Voice Notes |  | 6d | 2026-04-22 | 2026-04-29 | 37 | 2026-04-22 | 2026-04-29 | 6d | 0d | Amro Eid - AI / ML Engineer | 48h | 2,400 | 2,400 |
| 41 | 9.2 | AI Learning Memory |  | 6d | 2026-04-30 | 2026-05-07 | 40 | 2026-04-30 | 2026-05-07 | 6d | 0d | Amro Eid - AI / ML Engineer | 48h | 2,400 | 2,400 |
| 42 | 9.3 | Website Visitor Tracking |  | 5d | 2026-05-08 | 2026-05-14 | 41 | 2026-05-08 | 2026-05-14 | 5d | 0d | Hossam Shehadhe - Backend Lead Developer | 40h | 1,600 | 1,600 |
| 43 | 9.4 | Co‑Pilot Human Review Mode |  | 5d | 2026-05-15 | 2026-05-21 | 42 | 2026-05-15 | 2026-05-21 | 5d | 0d | Sarah Nasser - Frontend Developer | 40h | 1,000 | 1,000 |
| 44 | 10 | Milestone M5: Bonus Features Ready | milestone | 0d | 2026-05-21 | 2026-05-21 | 39 | 2026-05-21 | 2026-05-21 | 0d | 0d |  |  |  |  |
| 45 | 11 | **Testing & QA** |  | 17d | 2026-05-22 | 2026-06-15 | 39, 44 | 2026-05-22 | 2026-06-15 | 17d | 0d |  | 160h | 8,160 | 8,160 |
| 46 | 11.1 | Unit Testing |  | 5d | 2026-05-22 | 2026-05-28 | 43 | 2026-05-22 | 2026-05-28 | 5d | 0d | Dev Team -Shared Developers | 40h | 3,600 | 3,600 |
| 47 | 11.2 | Integration Testing |  | 5d | 2026-05-29 | 2026-06-04 | 46 | 2026-05-29 | 2026-06-04 | 5d | 0d | Dana Farah - QA Engineer | 40h | 1,000 | 1,000 |
| 48 | 11.3 | Security Testing |  | 3d | 2026-06-05 | 2026-06-09 | 47 | 2026-06-05 | 2026-06-09 | 3d | 0d | Dana Farah - QA Engineer; Dev Team -Shared Developers | 48h | 2,760 | 2,760 |
| 49 | 11.4 | UAT |  | 4d | 2026-06-10 | 2026-06-15 | 48 | 2026-06-10 | 2026-06-15 | 4d | 0d | Dana Farah - QA Engineer | 32h | 800 | 800 |
| 50 | 12 | Milestone M6: System Accepted | milestone | 0d | 2026-06-15 | 2026-06-15 | 45 | 2026-06-15 | 2026-06-15 | 0d | 0d | Dana Farah - QA Engineer; Stakeholders - Business Users |  |  |  |

| ID | WBS | Task | Type | Duration | Start | Finish | Predecessors | Baseline start | Baseline finish | Baseline duration | Total slack | Resources | Work | Cost | Baseline cost |
| --- | --- | --- | --- | --- | --- | --- | --- | --- | --- | --- | --- | --- | --- | --- | --- |
| 51 | 13 | **Deployment & Launch** |  | 9d | 2026-06-16 | 2026-06-26 | 45, 50 | 2026-06-16 | 2026-06-26 | 9d | 0d |  | 96h | 4,600 | 4,600 |
| 52 | 13.1 | Production Deployment |  | 2d | 2026-06-16 | 2026-06-17 | 49 | 2026-06-16 | 2026-06-17 | 2d | 0d | Rami Abed - DevOps Engineer | 16h | 880 | 880 |
| 53 | 13.2 | Monitoring & Logging |  | 2d | 2026-06-18 | 2026-06-19 | 52 | 2026-06-18 | 2026-06-19 | 2d | 0d | Rami Abed - DevOps Engineer | 16h | 880 | 880 |
| 54 | 13.3 | Documentation |  | 3d | 2026-06-22 | 2026-06-24 | 53 | 2026-06-22 | 2026-06-24 | 3d | 0d | Ahmed Saleh - Project Manager; Bilal Anabosi - Business Analyst | 48h | 2,040 | 2,040 |
| 55 | 13.4 | Training & Handover |  | 2d | 2026-06-25 | 2026-06-26 | 54 | 2026-06-25 | 2026-06-26 | 2d | 0d | Ahmed Saleh - Project Manager | 16h | 800 | 800 |
| 56 | 14 | Milestone M7: Go‑Live | milestone | 0d | 2026-06-26 | 2026-06-26 | 51 | 2026-06-26 | 2026-06-26 | 0d | 0d |  |  |  |  |
